How a schedule from MS Project changed from version to version. A marks actual dates.

## Version 1 (saved 2017-10-30, file Project1.mpp)

Note of the change: preliminary project file. some duties not set and lists not made

| ID | WBS | Task | Duration | Start | Finish | Predecessors | Total float | Constraint |
| --- | --- | --- | --- | --- | --- | --- | --- | --- |
| 1 |  | Product Requirements | 5d | 2017-10-13 | 2017-10-19 |  | 29d | finish no earlier than 2017-10-19 |
| 2 |  | basic schematic | 5d | 2017-10-20 | 2017-10-26 | 1 | 29d |  |
| 3 |  | final schematic | 4d | 2017-10-30 | 2017-11-02 |  | 0d |  |
| 4 |  | basic layout | 5d | 2017-11-10 | 2017-11-16 | 3 | 0d |  |
| 5 |  | final layout | 8d | 2017-11-22 | 2017-12-06 | 4 | 0d |  |
| 6 | 6 | **prototype** | 16d | 2017-11-06 | 2017-11-27 | 3 | 7d |  |
| 7 |  | breadboard | 5d | 2017-11-06 | 2017-11-10 | 3 | 14d |  |
| 8 | 6.2 | **prototype debug** | 6d | 2017-11-20 | 2017-11-27 | 7, 16 | 7d |  |
| 9 |  | power source stable | 2d | 2017-11-20 | 2017-11-21 |  | 9d |  |
| 10 |  | LED matrix output | 2d | 2017-11-20 | 2017-11-21 |  | 9d |  |
| 11 |  | accelerometer input | 2d | 2017-11-22 | 2017-11-23 |  | 7d |  |
| 12 |  | code debug | 2d | 2017-11-24 | 2017-11-27 | 9, 10, 11 | 7d |  |
| 13 |  | parts list | 1d | 2017-11-17 | 2017-11-17 | 3 | 13d | start no earlier than 2017-11-03 |
| 14 |  | maze code | 9d | 2017-10-30 | 2017-11-09 |  | 7d |  |
| 15 |  | input/output code | 9d | 2017-10-30 | 2017-11-09 |  | 7d |  |
| 16 |  | final code | 5d | 2017-11-13 | 2017-11-17 | 14, 15 | 9d |  |
| 17 |  | order parts for send to fab | 1d? | 2017-10-29 | 2017-10-29 |  |  |  |
| 18 |  | order parts for prototyping | 1d? | 2017-10-29 | 2017-10-29 |  |  |  |
| 19 | 13 | **final debug** | 4d? | 2017-11-30 | 2017-12-05 |  |  |  |
| 20 |  | meet power requirements | 2d? | 2017-11-30 | 2017-12-01 |  | 3d |  |
| 21 |  | game functions | 4d | 2017-11-30 | 2017-12-05 |  | 1d |  |

## Version 2 (saved 2017-11-01, file Team10Project.mpp)

Last finish 2017-12-06 → 2017-11-30 (-6d). Complete tasks 0 → 3.

Added:

| ID | Task | Duration | Start | Finish | Predecessors | Constraint | Resources |
| --- | --- | --- | --- | --- | --- | --- | --- |
| 2 | review product requirements | 1d | 2017-10-12 A | 2017-10-18 A | 3 | start no later than 2017-10-18 | Andrew; Dana; Thao; Will |
| 3 | Requirement document | 4d | 2017-10-12 A | 2017-10-17 A |  | finish no earlier than 2017-10-18 | Andrew; Dana; Thao; Will |
| 11 | test plan | 2d | 2017-11-12 | 2017-11-14 |  |  | Andrew; Dana [50%]; Thao [50%]; Will |
| 12 | test plan review | 2d | 2017-11-12 | 2017-11-14 |  |  | Andrew; Dana [50%]; Thao [50%]; Will |
| 18 | **coding** | 10d | 2017-10-29 A | 2017-11-12 |  |  |  |
| 21 | test plan | 2d | 2017-11-06 | 2017-11-08 | 19, 20 |  | Andrew [50%]; Dana [50%]; Thao; Will |
| 22 | test plan review | 1d | 2017-11-08 | 2017-11-09 | 21 |  | Andrew; Dana [50%]; Thao [50%]; Will |
| 27 | test plan final | 1d | 2017-11-27 | 2017-11-27 |  |  | Andrew; Dana; Thao; Will |
| 28 | test plan review | 1d | 2017-11-28 | 2017-11-28 |  |  | Andrew; Dana; Thao; Will |

Changed:

| ID | Task | Start | Finish | Duration | Complete | Total float | Predecessors | Other |
| --- | --- | --- | --- | --- | --- | --- | --- | --- |
| 1 | **Product Requirements** | 2017-10-13 → 2017-10-12 A (-1d) | 2017-10-19 → 2017-10-18 A (-1d) |  | 0% → 100% | 29d → none |  | constraint finish no earlier than 2017-10-19 → none; resources Andrew; Dana; Thao; Will → none |
| 4 | basic schematic | 2017-10-20 A | 2017-10-26 → 2017-10-24 A (-2d) | 5d → 4d | 0% → 100% | 29d → none |  | resources Andrew; Will → Andrew; Will [50%] |
| 5 | final schematic | 2017-10-30 → 2017-10-29 A (-1d) | 2017-11-02 → 2017-11-03 (+1d) | 4d → 5d | 0% → 75% | 0d → -0.25d | none → 4 |  |
| 6 | basic layout | 2017-11-10 → 2017-11-03 (-7d) | 2017-11-16 → 2017-11-08 (-8d) | 5d → 5.75d |  |  |  | constraint none → finish no later than 2017-11-08; resources Andrew; Dana → Andrew [50%]; Dana [50%] |
| 7 | final layout | 2017-11-22 → 2017-11-08 (-14d) | 2017-12-06 → 2017-11-13 (-23d) | 8d → 5d |  | 0d → 2d |  | constraint none → finish no later than 2017-11-16; resources Dana; Thao → Dana [50%]; Thao [50%] |
| 8 | **prototype** | 2017-11-06 → 2017-11-03 A (-3d) | 2017-11-27 → 2017-11-24 (-3d) | 16d → 15.6d | 0% → 2% | 7d → 4.4d |  |  |
| 9 | breadboard | 2017-11-06 → 2017-11-03 A (-3d) | 2017-11-10 → 2017-11-07 (-3d) |  | 0% → 10% | 14d → 8d |  | resources Thao; Will → Thao [50%]; Will [50%] |
| 10 | **prototype debug** | 2017-11-20 → 2017-11-12 (-8d) | 2017-11-27 → 2017-11-24 (-3d) | 6d → 9.6d |  | 7d → 4.4d |  |  |
| 13 | power source stable | 2017-11-20 → 2017-11-14 (-6d) | 2017-11-21 → 2017-11-18 (-3d) | 2d → 4d |  | 9d → 4.4d | none → 11, 12 | resources Dana; Will → Dana [50%]; Will [50%] |
| 14 | LED matrix output | 2017-11-20 → 2017-11-14 (-6d) | 2017-11-21 → 2017-11-17 (-4d) | 2d → 3d |  | 9d → 5.4d | none → 11, 12 | resources Andrew; Thao → Andrew [50%]; Thao [50%]; Will [50%] |
| 15 | accelerometer input | 2017-11-22 → 2017-11-14 (-8d) | 2017-11-23 → 2017-11-18 (-5d) | 2d → 4d |  | 7d → 4.4d | none → 11, 12 | resources Andrew; Dana → Andrew [50%]; Dana [50%] |
| 16 | code debug | 2017-11-24 → 2017-11-18 (-6d) | 2017-11-27 → 2017-11-24 (-3d) | 2d → 6d |  | 7d → 4.4d |  | resources Thao; Will → Thao; Will; Dana [50%]; Andrew [50%] |
| 17 | parts list | 2017-11-17 → 2017-11-03 (-14d) | 2017-11-17 → 2017-11-04 (-13d) |  |  | 13d → -0.25d | 5 → none | constraint start no earlier than 2017-11-03 → start no earlier than 2017-11-02 |
| 19 | maze code | 2017-10-30 → 2017-10-29 A (-1d) | 2017-11-09 → 2017-11-02 (-7d) | 9d → 5d | 0% → 8% | 7d → 6d |  | resources Andrew; Will → Will; Thao [50%] |
| 20 | input/output code | 2017-10-30 → 2017-10-29 A (-1d) | 2017-11-09 → 2017-11-06 (-3d) | 9d → 4d | 0% → 15% | 7d → 4.4d |  | resources Dana; Thao → Thao [50%] |
| 23 | final code | 2017-11-13 → 2017-11-09 (-4d) | 2017-11-17 → 2017-11-12 (-5d) | 5d → 3d |  | 9d → 4.4d | 19, 20 → 19, 20, 21, 22 | resources Thao; Will → Thao [50%]; Will [75%] |
| 26 | **final debug** | 2017-11-30 → 2017-11-27 (-3d) | 2017-12-05 → 2017-11-30 (-5d) | 4d? → 4d |  | none → 0d |  | constraint none → start no earlier than 2017-11-27 |
| 29 | meet power requirements | 2017-11-30 → 2017-11-29 (-1d) | 2017-12-01 → 2017-11-30 (-1d) | 2d? → 2d |  | 3d → 0d | none → 27, 28 | resources Andrew; Dana → Andrew |
| 30 | game functions | 2017-11-30 → 2017-11-29 (-1d) | 2017-12-05 → 2017-11-30 (-5d) | 4d → 2d |  | 1d → 0d | none → 27, 28 |  |

## Version 3 (saved 2017-11-02, file Team10Project.mpp)

Last finish stays 2017-11-30.

Changed:

| ID | Task | Other |
| --- | --- | --- |
| 2 | Review Product Requirements | was named review product requirements |
| 3 | Requirement Document | was named Requirement document |
| 4 | Basic Schematic | was named basic schematic |
| 5 | Final Schematic | was named final schematic |
| 6 | Basic Layout | was named basic layout |
| 7 | Final Layout | was named final layout |
| 8 | **Prototype** | was named prototype |
| 9 | Breadboard | was named breadboard |
| 10 | **Prototype Debug** | was named prototype debug |
| 11 | Test Plan | was named test plan |
| 12 | Test Plan Review | was named test plan review |
| 13 | Power Source Stable | was named power source stable |
| 14 | LED Matrix Output | was named LED matrix output |
| 15 | Accelerometer Input | was named accelerometer input |
| 16 | Code Debug | was named code debug |
| 17 | Parts list | was named parts list |
| 18 | **Coding** | was named coding |
| 19 | Maze Code | was named maze code |
| 20 | Input/Output Code | was named input/output code |
| 21 | Test Plan | was named test plan |
| 22 | Test Plan Review | was named test plan review |
| 23 | Final Code | was named final code |
| 24 | Order Parts for Sending to FAB | was named order parts for send to fab |
| 25 | Order Parts for Prototyping | was named order parts for prototyping |
| 26 | **Final Debug** | was named final debug |
| 27 | Test Plan Final | was named test plan final |
| 28 | Test Plan Review | was named test plan review |
| 29 | Meet Power Requirements | was named meet power requirements |
| 30 | Game Functions | was named game functions |
